How a schedule from MS Project changed from version to version. A marks actual dates.

## Version 1 (saved 2016-10-05)

Note of the change: Complete WBS

| ID | WBS | Task | Duration | Start | Finish | Predecessors | Total float |
| --- | --- | --- | --- | --- | --- | --- | --- |
| 1 | 1 | **FAVN** | 75d | 2016-09-05 | 2016-12-16 |  | 0d |
| 2 | 1.1 | **Initiation** | 14d | 2016-09-05 | 2016-09-22 |  | 0d |
| 3 | 1.1.1 | **Develop project idea** | 0.5d | 2016-09-05 | 2016-09-05 |  | 0d |
| 4 |  | Define project scope | 0.25d | 2016-09-05 | 2016-09-05 |  | 0d |
| 5 |  | Define project features | 0.25d | 2016-09-05 | 2016-09-05 | 4 | 0d |
| 6 |  | Form up team roles | 0.5d | 2016-09-05 | 2016-09-05 | 3 | 0d |
| 7 |  | Kick-off meeting | 0.5d | 2016-09-06 | 2016-09-06 | 6 | 0d |
| 8 | 1.1.4 | **Project Introduction** | 2.5d | 2016-09-06 | 2016-09-08 |  | 0d |
| 9 |  | Create Project Introduction | 2d | 2016-09-06 | 2016-09-08 | 7 | 0d |
| 10 |  | Review Project Introduction | 0.25d | 2016-09-08 | 2016-09-08 | 9 | 0d |
| 11 |  | Update Project Introduction | 0.25d | 2016-09-08 | 2016-09-08 | 10 | 0d |
| 12 |  | Complete Project Introduction | 0d | 2016-09-08 | 2016-09-08 | 11 | 0d |
| 13 | 1.1.5 | **Environment** | 1d | 2016-09-09 | 2016-09-09 |  | 0d |
| 14 |  | Create guideline to install and use tools, environment | 0.5d | 2016-09-09 | 2016-09-09 | 12 | 0d |
| 15 |  | Setup environment | 0.5d | 2016-09-09 | 2016-09-09 | 14 | 0d |
| 16 | 1.1.6 | **Technologies** | 7d | 2016-09-12 | 2016-09-20 |  | 0.75d |
| 17 |  | Study Android | 6d | 2016-09-12 | 2016-09-19 | 15 | 3d |
| 18 |  | Study PHP, MySQL | 3d | 2016-09-12 | 2016-09-14 | 15 | 0.75d |
| 19 |  | Study Laravel | 4d | 2016-09-15 | 2016-09-20 | 18 | 0.75d |
| 20 | 1.1.7 | **Project Plan** | 8.25d | 2016-09-12 | 2016-09-22 |  | 0d |
| 21 |  | Create Project Schedule | 1d | 2016-09-21 | 2016-09-21 | 19 | 0.75d |
| 22 |  | Review and update Project Schedule | 0.25d | 2016-09-22 | 2016-09-22 | 21 | 0.75d |
| 23 |  | Create Project Plan | 2d | 2016-09-12 | 2016-09-13 | 15 | 0d |
| 24 |  | Review and update Project Plan | 0.25d | 2016-09-14 | 2016-09-14 | 23 | 0d |
| 25 |  | Create CM Plan | 0.5d | 2016-09-14 | 2016-09-14 | 24 | 0d |
| 26 |  | Review and update CM Plan | 0.25d | 2016-09-14 | 2016-09-14 | 25 | 0d |
| 27 |  | Create Risk Management Plan | 1d | 2016-09-15 | 2016-09-15 | 26 | 0d |
| 28 |  | Review and Risk Management Plan | 0.25d | 2016-09-16 | 2016-09-16 | 27 | 0d |
| 29 | 1.1.8 | **User Requirement Specification** | 3.25d | 2016-09-16 | 2016-09-21 |  | 0d |
| 30 |  | Define user requirements | 1d | 2016-09-16 | 2016-09-19 | 28 | 0d |
| 31 |  | Create URS document | 2d | 2016-09-19 | 2016-09-21 | 30 | 0d |
| 32 |  | Review and update URS document | 0.25d | 2016-09-21 | 2016-09-21 | 31 | 0d |
| 33 |  | Complete User Requirements | 0d | 2016-09-21 | 2016-09-21 | 32 | 0d |
| 34 | 1.1.9 | **Q&A Sheet** | 1.25d | 2016-09-21 | 2016-09-22 |  | 0d |
| 35 |  | Create Q&A sheet | 1d | 2016-09-21 | 2016-09-22 | 33 | 0d |
| 36 |  | Review Q&A sheet | 0.25d | 2016-09-22 | 2016-09-22 | 35 | 0d |
| 37 |  | Create progress report 1 | 0.25d | 2016-09-22 | 2016-09-22 | 36 | 0d |
| 38 |  | Submit progress report 1 | 0d | 2016-09-22 | 2016-09-22 | 37 | 0d |
| 39 | 1.2 | **Solution** | 16.5d | 2016-09-23 | 2016-10-17 | 2 | 0d |
| 40 |  | Collect data | 3d | 2016-09-23 | 2016-09-27 |  | 7d |
| 41 | 1.2.2 | **Demo & mock-ups** | 2.5d | 2016-09-23 | 2016-09-27 |  | 0d |
| 42 |  | Create Demo | 1d | 2016-09-23 | 2016-09-23 |  | 0d |
| 43 |  | Design mock-ups | 2d | 2016-09-23 | 2016-09-26 |  | 8d |
| 44 |  | Review and update mock-up | 0.5d | 2016-09-27 | 2016-09-27 | 43 | 8d |
| 45 | 1.2.3 | **Software Requirement Specification** | 4d | 2016-09-23 | 2016-09-28 |  | 3d |
| 46 | 1.2.3.1 | **Functional Requirements Specification** | 4d | 2016-09-23 | 2016-09-28 |  | 3d |
| 47 |  | Admin/Expert functions | 1d | 2016-09-23 | 2016-09-23 |  | 3d |
| 48 |  | Dispatcher functions | 1d | 2016-09-26 | 2016-09-26 | 47 | 3d |
| 49 |  | First Aid functions | 1d | 2016-09-27 | 2016-09-27 | 48 | 3d |
| 50 |  | Ambulance functions | 1d | 2016-09-28 | 2016-09-28 | 40 | 12.5d |
| 51 |  | Non-functional Requirements Specification | 0.5d | 2016-09-28 | 2016-09-28 | 40 | 7d |
| 52 |  | Other parts | 0.5d | 2016-09-28 | 2016-09-28 | 49 | 3d |
| 53 |  | Complete Software Requirements | 0d | 2016-09-28 | 2016-09-28 | 52 | 13d |
| 54 | 1.2.4 | **System Design** | 14.5d | 2016-09-26 | 2016-10-14 | 42 | 0d |
| 55 |  | Create design review checklist | 1d | 2016-09-26 | 2016-09-26 |  | 0d |
| 56 | 1.2.4.2 | **Architectural Design** | 6.5d | 2016-09-27 | 2016-10-05 |  | 0d |
| 57 |  | Define architectural design | 1d | 2016-09-27 | 2016-09-27 | 55 | 0d |
| 58 |  | Define system features | 2d | 2016-09-27 | 2016-09-29 | 44 | 8d |
| 59 |  | Study and choose suitable architectural design | 2d | 2016-09-28 | 2016-09-29 | 57 | 0d |
| 60 |  | Create Architectural design | 3d | 2016-09-29 | 2016-10-04 | 58 | 8d |
| 61 |  | Review architectural design | 1d | 2016-09-30 | 2016-09-30 | 59 | 0d |
| 62 |  | Update Architectural Design | 1d | 2016-10-04 | 2016-10-05 | 60 | 8d |
| 63 |  | Complete Architectural Design version 1.0 | 0d | 2016-10-05 | 2016-10-05 | 62 | 8d |
| 64 | 1.2.4.3 | **Screen design** | 6.5d | 2016-09-28 | 2016-10-06 |  | 0.5d |
| 65 |  | Create mobile screen design | 4d | 2016-09-28 | 2016-10-04 | 52 | 3d |
| 66 |  | Create web screen design | 2d | 2016-10-03 | 2016-10-04 | 61 | 0d |
| 67 |  | Review screen design | 1d | 2016-10-05 | 2016-10-05 | 66 | 0d |
| 68 |  | Update screen design | 1d | 2016-10-06 | 2016-10-06 | 67 | 0d |
| 69 |  | Complete screen design | 0d | 2016-10-06 | 2016-10-06 | 68 | 0d |
| 70 | 1.2.4.4 | **Database design** | 4d | 2016-10-07 | 2016-10-12 |  | 0d |

| ID | WBS | Task | Duration | Start | Finish | Predecessors | Total float |
| --- | --- | --- | --- | --- | --- | --- | --- |
| 71 |  | Create database design | 3d | 2016-10-07 | 2016-10-11 | 69 | 2.5d |
| 72 |  | Review database design | 0.5d | 2016-10-07 | 2016-10-07 | 69 | 0d |
| 73 |  | Update database design | 1d | 2016-10-12 | 2016-10-12 | 71 | 2.5d |
| 74 |  | Complete database design | 0d | 2016-10-12 | 2016-10-12 | 73 | 2.5d |
| 75 | 1.2.4.5 | **Class/Component Design** | 8d | 2016-10-04 | 2016-10-14 | 65 | 1d |
| 76 |  | Define Class and Component | 1d | 2016-10-07 | 2016-10-10 | 72 | 0d |
| 77 |  | Create Class/component design | 3d | 2016-10-10 | 2016-10-13 | 76 | 0d |
| 78 |  | Review Class/component design | 1d | 2016-10-04 | 2016-10-05 | 65 | 8d |
| 79 |  | Update Class/component design | 1d | 2016-10-13 | 2016-10-14 | 77 | 0d |
| 80 |  | Complete Class/component design | 0d | 2016-10-14 | 2016-10-14 | 79 | 0d |
| 81 |  | Create progress report 2 | 1d | 2016-10-14 | 2016-10-17 | 80 | 0d |
| 82 |  | Submit progress report 2 | 0d | 2016-10-17 | 2016-10-17 | 81 | 0d |
| 83 | 1.2.7 | **Testing** | 5d | 2016-09-28 | 2016-10-05 |  | 7d |
| 84 |  | Create test plan review checklists | 0.5d | 2016-09-28 | 2016-09-28 | 51 | 7d |
| 85 |  | Create test case review checklists | 0.5d | 2016-09-29 | 2016-09-29 | 84 | 7d |
| 86 |  | Create test plan | 2d | 2016-09-29 | 2016-10-03 | 85 | 7d |
| 87 |  | Review test plan | 1d | 2016-10-03 | 2016-10-04 | 86 | 7d |
| 88 |  | Update test plan | 1d | 2016-10-04 | 2016-10-05 | 87 | 7d |
| 89 |  | Test plan complete | 0d | 2016-10-05 | 2016-10-05 | 88 | 7d |
| 90 |  | Create progress report 3 | 1d | 2016-10-05 | 2016-10-06 | 89 | 7d |
| 91 |  | Submit progress report 3 | 0d | 2016-10-06 | 2016-10-06 | 90 | 7d |
| 92 | 1.3 | **Construction** | 28.5d | 2016-10-17 | 2016-11-24 | 39 | 0d |
| 93 | 1.3.1 | **Define Coding Standards** | 1d | 2016-10-17 | 2016-10-18 |  | 0d |
| 94 |  | Create Coding Convention | 1d | 2016-10-17 | 2016-10-18 |  | 0d |
| 95 |  | Create Code & UT Test review checklist | 1d | 2016-10-17 | 2016-10-18 |  | 0d |
| 96 | 1.3.2 | **Screen Design** | 1d | 2016-10-18 | 2016-10-19 |  | 0d |
| 97 |  | Refine screen design document and prototype | 1d | 2016-10-18 | 2016-10-19 | 94, 95 | 0d |
| 98 | 1.3.3 | **Coding & Unit test** | 19d | 2016-10-19 | 2016-11-15 | 97 | 0d |
| 99 |  | Structure core modules | 2d | 2016-10-19 | 2016-10-21 |  | 0d |
| 100 |  | Webservice system | 3d | 2016-10-19 | 2016-10-24 |  | 4d |
| 101 | 1.3.3.3 | **Web app modules** | 16d | 2016-10-24 | 2016-11-15 |  | 4d |
| 102 | 1.3.3.3.1 | **Admin/Expert site module** | 13d | 2016-10-24 | 2016-11-10 |  | 4d |
| 103 | 1.3.3.3.1.1 | **Expert role module** | 7d | 2016-10-24 | 2016-11-02 |  | 4d |
| 104 |  | Dashboard module | 2d | 2016-10-24 | 2016-10-26 | 100 | 4d |
| 105 |  | Profile module | 1d | 2016-10-26 | 2016-10-27 | 104 | 4d |
| 106 |  | Q & A module | 2d | 2016-10-27 | 2016-10-31 | 105 | 4d |
| 107 |  | Notifications module | 1d | 2016-10-31 | 2016-11-01 | 106 | 4d |
| 108 |  | Information statistic module | 1d | 2016-11-01 | 2016-11-02 | 107 | 4d |
| 109 | 1.3.3.3.1.2 | **Admin role module** | 6d | 2016-11-02 | 2016-11-10 |  | 7.5d |
| 110 |  | Manage user admin module | 1d | 2016-11-02 | 2016-11-03 | 108 | 7.5d |
| 111 |  | Manage user expert module | 1d | 2016-11-03 | 2016-11-04 | 110 | 7.5d |
| 112 |  | Manage user dispatcher module | 1d | 2016-11-04 | 2016-11-07 | 111 | 7.5d |
| 113 |  | Manage user ambulance module | 1d | 2016-11-07 | 2016-11-08 | 112 | 7.5d |
| 114 |  | Manage Notifications module | 2d | 2016-11-08 | 2016-11-10 | 113 | 7.5d |
| 115 |  | Dispatcher site module | 3d | 2016-11-10 | 2016-11-15 | 114 | 7.5d |
| 116 | 1.3.3.4 | **Mobile app modules** | 14d | 2016-10-19 | 2016-11-08 |  | 2d |
| 117 | 1.3.3.4.1 | **First Aid app module** | 12d | 2016-10-21 | 2016-11-08 |  | 0d |
| 118 |  | Emergency module | 4d | 2016-10-21 | 2016-10-27 | 99 | 0d |
| 119 |  | Learning module | 2d | 2016-10-27 | 2016-10-31 | 118 | 0d |
| 120 |  | Setting module | 2d | 2016-10-31 | 2016-11-02 | 119 | 0d |
| 121 |  | More module | 2d | 2016-11-02 | 2016-11-04 | 120 | 0d |
| 122 |  | User interaction module | 2d | 2016-11-04 | 2016-11-08 | 121 | 0d |
| 123 | 1.3.3.4.2 | **Ambulace app module** | 5d | 2016-10-19 | 2016-10-26 |  | 20.5d |
| 124 |  | Emergency module | 3d | 2016-10-19 | 2016-10-24 |  | 20.5d |
| 125 |  | Login/ Logout/ View history/ module | 2d | 2016-10-24 | 2016-10-26 | 124 | 20.5d |
| 126 |  | Create Progress Report 4 | 1d | 2016-10-26 | 2016-10-27 | 125 | 20.5d |
| 127 |  | Submit Progress Report 4 | 0d | 2016-10-27 | 2016-10-27 | 126 | 20.5d |
| 128 | 1.3.6 | **Testing** | 24.5d | 2016-10-17 | 2016-11-18 |  | 4d |
| 129 | 1.3.6.1 | **Writing test case** | 21d | 2016-10-17 | 2016-11-15 |  | 7.5d |
| 130 | 1.3.6.1.1 | **System test case** | 6d | 2016-10-17 | 2016-10-25 |  | 22.5d |
| 131 |  | Create system test case | 4d | 2016-10-17 | 2016-10-21 |  | 22.5d |
| 132 |  | Review system test case | 1d | 2016-10-21 | 2016-10-24 | 131 | 22.5d |
| 133 |  | Update system test case | 1d | 2016-10-24 | 2016-10-25 | 132 | 22.5d |
| 134 | 1.3.6.1.2 | **Integration test case** | 6d | 2016-10-17 | 2016-10-25 |  | 22.5d |
| 135 |  | Create integration test case | 4d | 2016-10-17 | 2016-10-21 |  | 22.5d |
| 136 |  | Review integration test case | 1d | 2016-10-21 | 2016-10-24 | 135 | 22.5d |
| 137 |  | Update integration test case | 1d | 2016-10-24 | 2016-10-25 | 136 | 22.5d |
| 138 |  | Writing test case complete | 0d | 2016-11-15 | 2016-11-15 | 98 | 7.5d |
| 139 | 1.3.6.2 | **Execute Test Round 1** | 5d | 2016-11-08 | 2016-11-15 | 108, 122 | 0d |
| 140 |  | Execute Integration Test | 2d | 2016-11-08 | 2016-11-10 |  | 0d |

| ID | WBS | Task | Duration | Start | Finish | Predecessors | Total float |
| --- | --- | --- | --- | --- | --- | --- | --- |
| 141 |  | Fix bug Integration Test | 2d | 2016-11-10 | 2016-11-14 | 140 | 1d |
| 142 |  | Execute System Test | 2d | 2016-11-10 | 2016-11-14 | 140 | 0d |
| 143 |  | Fix bug System Test | 1d | 2016-11-14 | 2016-11-15 | 142 | 0d |
| 144 |  | Update Test Case | 1d | 2016-11-14 | 2016-11-15 | 142 | 7.5d |
| 145 | 1.3.6.4 | **Execute Test Round 2** | 3d | 2016-11-15 | 2016-11-18 | 139 | 0d |
| 146 |  | Execute Integration Test | 1d | 2016-11-15 | 2016-11-16 |  | 0d |
| 147 |  | Fix bug Integration Test | 1d | 2016-11-16 | 2016-11-17 | 146 | 5.5d |
| 148 |  | Execute System Test | 1d | 2016-11-16 | 2016-11-17 | 146 | 0d |
| 149 |  | Fix bug System Test | 1d | 2016-11-17 | 2016-11-18 | 148 | 4.5d |
| 150 |  | Create Test Report | 1.5d | 2016-11-17 | 2016-11-18 | 148 | 0d |
| 151 |  | Testing Complete | 0d | 2016-11-18 | 2016-11-18 | 150 | 0d |
| 152 | 1.3.7 | **Quality Control** | 3d | 2016-11-21 | 2016-11-23 | 151 | 0d |
| 153 |  | Create Quality Report | 1d | 2016-11-21 | 2016-11-21 |  | 0d |
| 154 |  | Review Quality Report | 1d | 2016-11-22 | 2016-11-22 | 153 | 0d |
| 155 |  | Update Quality Report | 1d | 2016-11-23 | 2016-11-23 | 154 | 0d |
| 156 |  | Create Progress Report 5 | 1d | 2016-11-24 | 2016-11-24 | 155 | 0d |
| 157 |  | Submit Progress Report 5 | 0d | 2016-11-24 | 2016-11-24 | 156 | 0d |
| 158 | 1.4 | **Termination** | 16d | 2016-11-25 | 2016-12-16 | 92 | 0d |
| 159 | 1.4.1 | **Final Report Document** | 8d | 2016-11-25 | 2016-12-06 |  | 0d |
| 160 |  | Create Final Report document | 2d | 2016-11-25 | 2016-11-28 |  | 14d |
| 161 |  | Create Installing Guide | 2d | 2016-11-25 | 2016-11-28 |  | 0d |
| 162 |  | Create User Guideline | 2d | 2016-11-29 | 2016-11-30 | 161 | 0d |
| 163 |  | Create Project Result Assessment | 2d | 2016-12-01 | 2016-12-02 | 162 | 0d |
| 164 |  | Create Slides for Final Presentation | 2d | 2016-12-05 | 2016-12-06 | 163 | 0d |
| 165 |  | Submit all Final Documents and Source codes | 0d | 2016-12-06 | 2016-12-06 | 164 | 0d |
| 166 | 1.4.3 | **Pre-closing** | 5d | 2016-12-07 | 2016-12-13 |  | 0d |
| 167 |  | Trainning presentation | 5d | 2016-12-07 | 2016-12-13 | 165 | 0d |
| 168 | 1.4.4 | **Closing** | 3d | 2016-12-14 | 2016-12-16 |  | 0d |
| 169 |  | Presentation for Capstone Project | 3d | 2016-12-14 | 2016-12-16 | 167 | 0d |
| 170 |  | Complete Project | 0d | 2016-12-16 | 2016-12-16 | 169 | 0d |

## Version 2 (saved 2016-12-09)

Note of the change: Schedule

Last finish stays 2016-12-16.

Changed:

| ID | Task | Start | Finish | Duration | Total float | Predecessors | Other |
| --- | --- | --- | --- | --- | --- | --- | --- |
| 23 | Create Project Plan |  |  |  |  |  | resources TEAM DOC → TEAM TEST |
| 24 | Review and update Project Plan |  |  |  |  |  | resources TEAM DOC → TEAM TEST |
| 25 | Create CM Plan |  |  |  |  |  | resources TEAM DOC → TEAM TEST |
| 26 | Review and update CM Plan |  |  |  |  |  | resources TEAM DOC → TEAM TEST |
| 27 | Create Risk Management Plan |  |  |  |  |  | resources TEAM DOC → TEAM TEST |
| 28 | Review and Risk Management Plan |  |  |  |  |  | resources TEAM DOC → TEAM TEST |
| 30 | Define user requirements |  |  |  |  |  | resources TEAM DOC → TEAM TEST |
| 31 | Create URS document |  |  |  |  |  | resources TEAM DOC → TEAM TEST |
| 32 | Review and update URS document |  |  |  |  |  | resources TEAM DOC → TEAM TEST |
| 37 | Create progress report 1 |  |  |  |  |  | resources TEAM DOC → TEAM TEST |
| 38 | Submit progress report 1 |  |  |  |  |  | resources TEAM DOC → TEAM TEST |
| 40 | Collect data |  |  |  |  |  | resources TEAM DOC → TEAM TEST |
| 75 | **Class/Component Design** | 2016-10-04 → 2016-10-07 (+3d) |  | 8d → 5d | 1d → 0d |  |  |
| 78 | Review Class/component design | 2016-10-04 → 2016-10-13 (+9d) | 2016-10-05 → 2016-10-14 (+9d) |  | 8d → 1d | 65 → 77 |  |
| 84 | Create test plan review checklists |  |  |  |  |  | resources TEAM DOC → TEAM TEST |
| 85 | Create test case review checklists |  |  |  |  |  | resources TEAM DOC → TEAM TEST |
| 86 | Create test plan |  |  |  |  |  | resources TEAM DOC → TEAM TEST |
| 87 | Review test plan |  |  |  |  |  | resources TEAM DOC → TEAM TEST |
| 88 | Update test plan |  |  |  |  |  | resources TEAM DOC → TEAM TEST |
| 89 | Test plan complete |  |  |  |  |  | resources TEAM DOC → TEAM TEST |
| 90 | Create progress report 3 |  |  |  |  |  | resources TEAM DOC → TEAM TEST |
| 138 | Writing test case complete |  |  |  |  |  | resources TEAM DOC → TEAM TEST |
| 144 | Update Test Case |  |  |  |  |  | resources TEAM DOC → TEAM TEST |
| 150 | Create Test Report |  |  |  |  |  | resources TEAM DOC → TEAM TEST |
| 151 | Testing Complete |  |  |  |  |  | resources TEAN DOC → TEAN TEST |
| 157 | Submit Progress Report 5 |  |  |  |  |  | resources TEAM DOC → TEAM TEST |
| 160 | Create Final Report document |  |  |  |  |  | resources TEAM DOC → TEAM TEST |

## Version 3 (saved 2016-12-13)

Note of the change: Merge branch 'master' of https://github.com/sangnvus/201609JS03

Last finish stays 2016-12-16.

Changed:

| ID | Task | Other |
| --- | --- | --- |
| 57 | Define Architectural design | was named Define architectural design |
| 58 | Define System features | was named Define system features |
| 61 | Review Architectural design | was named Review architectural design |
| 71 | Create Database design | was named Create database design |
| 72 | Review Database design | was named Review database design |
| 73 | Update Database design | was named Update database design |
| 74 | Complete Database design | was named Complete database design |
| 125 | Login/ Logout/ More module | was named Login/ Logout/ View history/ module |
